# 发现估算持续时间2

How a schedule from MS Project changed from version to version. A marks actual dates.

## Version 1 (saved 2020-04-02)

Note of the change: cb

| ID | WBS | Task | Duration | Start | Finish | Predecessors | Total float |
| --- | --- | --- | --- | --- | --- | --- | --- |
| 1 | 1 | **启动** | 5d | 2020-03-16 | 2020-03-20 |  | 0d |
| 2 |  | 组建核心团队 | 1d | 2020-03-16 | 2020-03-16 |  |  |
| 3 |  | 干系人分析 | 1d | 2020-03-17 | 2020-03-17 |  |  |
| 4 |  | 里程碑计划 | 1d | 2020-03-18 | 2020-03-18 |  |  |
| 5 |  | 制定项目章程 | 1d | 2020-03-19 | 2020-03-19 | 2, 3, 4 |  |
| 6 |  | 项目启动大会 | 1d | 2020-03-20 | 2020-03-20 | 5 |  |
| 7 | 2 | **规划** | 54d | 2020-03-25 | 2020-06-08 |  | 0d |
| 8 | 2.1 | **规划范围** | 18d | 2020-03-25 | 2020-04-17 |  | 0d |
| 9 |  | 制定需求说明书 | 10d | 2020-03-25 | 2020-04-07 | 6 |  |
| 10 |  | 界面设计 | 5d | 2020-04-08 | 2020-04-14 | 9 |  |
| 11 |  | 详细设计说明书 | 5d | 2020-04-08 | 2020-04-14 | 9 |  |
| 12 |  | 项目范围说明书 | 3d | 2020-04-08 | 2020-04-10 | 9 |  |
| 13 |  | 创建WBS | 2d | 2020-04-15 | 2020-04-16 | 10, 11, 12 |  |
| 14 |  | 形成范围基准 | 1d | 2020-04-17 | 2020-04-17 | 13 |  |
| 15 | 2.2 | **规划时间** | 20d | 2020-04-20 | 2020-05-15 |  | 0d |
| 16 |  | 排列工作包顺序 | 1d | 2020-04-20 | 2020-04-20 | 14 |  |
| 17 |  | 估算资源 | 2d | 2020-04-21 | 2020-04-22 | 16 |  |
| 18 |  | 估算持续时间 | 2d | 2020-05-04 | 2020-05-05 | 17 |  |
| 19 |  | 制定进度计划 | 1d | 2020-05-14 | 2020-05-14 | 18 |  |
| 20 |  | 形成进度基准 | 1d | 2020-05-15 | 2020-05-15 | 19 |  |
| 21 | 2.3 | **规划成本** | 12d | 2020-05-18 | 2020-06-02 |  | 0d |
| 22 |  | 项目成本估算 | 3d | 2020-05-18 | 2020-05-21 | 20 |  |
| 23 |  | 项目预算 | 2d | 2020-05-22 | 2020-06-01 | 22 |  |
| 24 |  | 形成范围基准 | 1d | 2020-06-02 | 2020-06-02 | 23 |  |
| 25 | 2.4 | **规划质量** | 8d | 2020-04-20 | 2020-04-29 |  | 0d |
| 26 |  | 制定测试计划 | 2d | 2020-04-20 | 2020-04-21 | 14 |  |
| 27 |  | 制定测试用例 | 6d | 2020-04-22 | 2020-04-29 | 26 |  |
| 28 | 2.5 | **规划人力资源** | 4d | 2020-05-06 | 2020-05-11 |  | 0d |
| 29 |  | 制定人力资源计划 | 2d | 2020-05-06 | 2020-05-07 | 17 |  |
| 30 |  | 制定人员配备管理计划 | 2d | 2020-05-08 | 2020-05-11 | 29 |  |
| 31 | 2.6 | **规划沟通** | 2d | 2020-05-12 | 2020-05-13 |  | 0d |
| 32 |  | 制定沟通管理计划 | 2d | 2020-05-12 | 2020-05-13 | 30 |  |
| 33 | 2.7 | **规划采购** | 7d | 2020-04-23 | 2020-05-01 |  | 0d |
| 34 |  | 自制外购分析 | 2d | 2020-04-23 | 2020-04-24 | 17 |  |
| 35 |  | 制定采购文件 | 5d | 2020-04-27 | 2020-05-01 | 34 |  |
| 36 | 2.8 | **规划风险** | 3d | 2020-06-03 | 2020-06-05 |  | 0d |
| 37 |  | 识别风险 | 1d | 2020-06-03 | 2020-06-03 | 15, 21, 25, 28, 31, 33 |  |
| 38 |  | 风险分析 | 1d | 2020-06-04 | 2020-06-04 | 37 |  |
| 39 |  | 制定风险登记册 | 1d | 2020-06-05 | 2020-06-05 | 38 |  |
| 40 |  | 规划整合 | 1d | 2020-06-08 | 2020-06-08 | 39 |  |
| 41 | 3 | **执行与监控** | 37d | 2020-06-09 | 2020-07-29 |  | 0d |
| 42 |  | 组建项目团队 | 9d | 2020-06-09 | 2020-06-19 | 7 |  |
| 43 | 3.2 | **项目执行** | 27d | 2020-06-22 | 2020-07-28 |  | 0d |
| 44 | 3.2.1 | **用户模块** | 27d | 2020-06-22 | 2020-07-28 |  | 0d |
| 45 |  | 注册登录 | 3d | 2020-06-22 | 2020-06-24 | 42 |  |
| 46 |  | 首页 | 3d | 2020-06-25 | 2020-06-29 | 45 |  |
| 47 |  | 查看课程 | 2d | 2020-06-30 | 2020-07-01 | 46 |  |
| 48 |  | 搜索课程 | 2d | 2020-07-02 | 2020-07-03 | 47 |  |
| 49 |  | 浏览商品 | 2d | 2020-07-06 | 2020-07-07 | 48 |  |
| 50 |  | 搜索商品 | 2d | 2020-07-08 | 2020-07-09 | 49 |  |
| 51 |  | 购物车 | 2d | 2020-07-10 | 2020-07-15 | 50 |  |
| 52 |  | 下单 | 2d | 2020-07-16 | 2020-07-17 | 51 |  |
| 53 |  | 今日计划 | 2d | 2020-07-20 | 2020-07-21 | 52 |  |
| 54 |  | 知识社区 | 2d | 2020-07-22 | 2020-07-23 | 53 |  |
| 55 |  | 个人配置 | 3d | 2020-07-24 | 2020-07-28 | 54 |  |
| 56 | 3.2.2 | **讲师模块** | 10d | 2020-06-22 | 2020-07-03 |  | 0d |
| 57 |  | 注册入驻 | 2d | 2020-06-22 | 2020-06-23 | 42 |  |
| 58 |  | 课程管理 | 3d | 2020-06-24 | 2020-06-26 | 57 |  |
| 59 |  | 订单处理 | 2d | 2020-06-29 | 2020-06-30 | 58 |  |
| 60 |  | 统计 | 1d | 2020-07-01 | 2020-07-01 | 59 |  |
| 61 |  | 讲师配置 | 2d | 2020-07-02 | 2020-07-03 | 60 |  |
| 62 | 3.2.3 | **管理员模块** | 8d | 2020-06-22 | 2020-07-01 |  | 0d |
| 63 |  | 讲师审核 | 2d | 2020-06-22 | 2020-06-23 | 42 |  |
| 64 |  | 促销活动 | 3d | 2020-06-24 | 2020-06-26 | 63 |  |
| 65 |  | 统计分析 | 1d | 2020-06-29 | 2020-06-29 | 64 |  |
| 66 |  | 备份 | 2d | 2020-06-30 | 2020-07-01 | 65 |  |
| 67 | 3.3 | **项目监控** | 10d | 2020-06-22 | 2020-07-03 |  | 0d |
| 68 |  | 各项指标监控 | 8d | 2020-06-22 | 2020-07-01 | 42 |  |
| 69 |  | 监控评审 | 1d | 2020-07-02 | 2020-07-02 | 68 |  |
| 70 |  | 变更评审 | 1d | 2020-07-03 | 2020-07-03 | 69 |  |

| ID | WBS | Task | Duration | Start | Finish | Predecessors | Total float |
| --- | --- | --- | --- | --- | --- | --- | --- |
| 71 |  | 例会 | 1d | 2020-06-22 | 2020-06-22 | 42 |  |
| 72 | 3.4 | **管理干系人** | 3d | 2020-06-22 | 2020-06-24 |  | 0d |
| 73 |  | 发布项目信息 | 1d | 2020-06-22 | 2020-06-22 | 42 |  |
| 74 |  | 报告监控指标 | 1d | 2020-06-23 | 2020-06-23 | 42 |  |
| 75 |  | 干系人沟通 | 1d | 2020-06-24 | 2020-06-24 | 42 |  |
| 76 | 3.5 | **团队建设** | 3d | 2020-06-22 | 2020-06-24 |  | 0d |
| 77 |  | 培训 | 1d | 2020-06-22 | 2020-06-22 | 42 |  |
| 78 |  | 娱乐活动 | 1d | 2020-06-23 | 2020-06-23 | 42 |  |
| 79 |  | 沟通 | 1d | 2020-06-24 | 2020-06-24 | 42 |  |
| 80 |  | 采购 | 20d | 2020-06-25 | 2020-07-24 | 42 |  |
| 81 |  | 项目验收 | 1d | 2020-07-29 | 2020-07-29 | 43 |  |
| 82 | 4 | **收尾** | 1d | 2020-07-30 | 2020-07-30 |  | 0d |
| 83 |  | 项目终验 | 1d | 2020-07-30 | 2020-07-30 | 81 |  |
| 84 |  | 结束采购 | 1d | 2020-07-30 | 2020-07-30 | 81 |  |
| 85 |  | 项目内部收尾 | 1d | 2020-07-30 | 2020-07-30 | 81 |  |

## Version 2 (saved 2020-04-24)

Note of the change: sqtj

Last finish stays 2020-07-30.

Changed:

| ID | Task | Other |
| --- | --- | --- |
| 1 | **启动** | resources none → 储备 [0.1%]; 间接成本 [0.1%] |
| 7 | **规划** | resources none → 间接成本 [0.1%]; 储备 [0.1%] |
| 41 | **执行与监控** | resources none → 间接成本 [0.1%]; 储备 [0.1%] |
| 82 | **收尾** | resources none → 间接成本 [0.1%]; 储备 [0.1%] |
